Schedule from OmniPlan.
Project start 2019-06-27

## Resources

| Resource | Group |
| --- | --- |
| 资源 1 | staff |
| 设备 1 | equipment |
| 素材 1 | material |
| 群组 1 | group |
| 杨紫剑 | staff |
| 崔文娟 | staff |
| 李帅 | staff |
| 唐乾柱 | staff |

## Schedule

| ID | WBS | Task | Predecessors | Constraint | Resources | Work |
| --- | --- | --- | --- | --- | --- | --- |
| 1 | 1 | **慧选股APP-1.0** |  | start no earlier than 2019-07-26 |  |  |
| 2 | 1.1 | **前端** |  |  |  |  |
| 3 | 1.1.1 | **基础组件** |  | start no earlier than 2019-06-28 |  |  |
| 4 | 1.1.1.1 | **横向滑动列表封装** |  |  |  |  |
| 5 | 1.1.1.1.1 | iOS |  | start no earlier than 2019-07-25 | 李帅 | 8h |
| 6 | 1.1.1.1.2 | 安卓 |  | start no earlier than 2019-07-25 | 唐乾柱 | 8h |
| 7 | 1.1.1.2 | 横向滑动tab封装 | 5 |  | 李帅 | 8h |
| 8 | 1.1.1.3 | 风险提示全局配置 | 7 |  | 李帅 | 8h |
| 9 | 1.1.2 | **首页** |  |  |  |  |
| 10 | 1.1.2.1 | 首页主页面 | 8 |  | 李帅 | 16h |
| 11 | 1.1.2.2 | **热点决策** |  | start no earlier than 2019-06-27 |  |  |
| 12 | 1.1.2.2.1 | 热点决策 | 10 |  | 李帅 | 16h |
| 13 | 1.1.2.2.2 | 热点聚焦列表页 | 12 |  | 李帅 | 8h |
| 14 | 1.1.2.2.3 | 热点聚焦详情页(样式固定可以rn实现，否则建议用h5实现) | 13 |  | 李帅 | 8h |
| 15 | 1.1.2.2.4 | 解盘视频详情页 | 14 |  | 李帅 | 16h |
| 16 | 1.1.2.2.5 | 解盘视频往期回顾列表 | 15 |  | 李帅 | 4h |
| 17 | 1.1.2.2.6 | 主力决策列表 | 16 |  | 李帅 | 12h |
| 18 | 1.1.2.2.7 | 龙虎榜-最新龙虎榜 | 17 |  | 李帅 | 12h |
| 19 | 1.1.2.2.8 | 龙虎榜-龙虎密码 | 18 |  | 李帅 | 8h |
| 20 | 1.1.2.2.9 | 龙虎榜-龙虎密码-搜索 | 19 |  | 李帅 | 4h |
| 21 | 1.1.2.2.10 | 龙虎榜-游资图谱 | 20 |  | 李帅 | 8h |
| 22 | 1.1.2.2.11 | 龙虎榜-游资图谱-搜索 | 21 |  | 李帅 | 4h |
| 23 | 1.1.2.2.12 | 龙虎榜-机构重仓 | 22 |  | 李帅 | 8h |
| 24 | 1.1.2.2.13 | 上榜详情页 | 23 |  | 李帅 | 12h |
| 25 | 1.1.2.2.14 | 席位透视 | 24 |  | 李帅 | 8h |
| 26 | 1.1.2.2.15 | 席位历史数据 | 25 |  | 李帅 | 8h |
| 27 | 1.1.2.2.16 | 资金流向统计列表 | 26 |  | 李帅 | 8h |
| 28 | 1.1.2.2.17 | 资金流向痛就饼图 | 27 |  | 李帅 | 8h |
| 29 | 1.1.2.2.18 | 观点直播引导区块跳转逻辑 | 28 |  | 李帅 | 4h |
| 30 | 1.1.2.2.19 | 热点风口页面搭建，数据获取和展示（一买，二买，主升浪） | 56 | start no earlier than 2019-06-27 | 崔文娟 | 24h |
| 31 | 1.1.2.2.20 | 热点风口历史战绩页面搭建 | 30 | start no earlier than 2019-06-27 | 崔文娟 | 8h |
| 32 | 1.1.2.2.21 | 热点风口设置页面搭建 | 31 | start no earlier than 2019-06-27 | 崔文娟 | 4h |
| 33 | 1.1.2.2.22 | 主题投资页面搭建，数据获取和展示（一买，二买，主升浪） | 32 | start no earlier than 2019-06-27 | 崔文娟 | 24h |
| 34 | 1.1.2.2.23 | 主题投资历史战绩页面搭建 | 33 | start no earlier than 2019-06-27 | 崔文娟 | 8h |
| 35 | 1.1.2.2.24 | 主题投资设置页面搭建 | 34 | start no earlier than 2019-06-27 | 崔文娟 | 4h |
| 36 | 1.1.2.2.25 | 主题报告列表页面搭建，数据获取和展示 | 35 | start no earlier than 2019-06-27 | 崔文娟 | 4h |
| 37 | 1.1.2.2.26 | 主题报告详情页 | 36 | start no earlier than 2019-06-27 | 崔文娟 | 8h |

| ID | WBS | Task | Predecessors | Constraint | Resources | Work |
| --- | --- | --- | --- | --- | --- | --- |
| 38 | 1.1.2.3 | **主力决策** |  | start no earlier than 2019-06-27 |  |  |
| 39 | 1.1.2.3.1 | 资金揭秘页面搭建，数据获取和展示 | 37 | start no earlier than 2019-06-27 | 崔文娟 | 24h |
| 40 | 1.1.2.3.2 | 资金抢入个股列表页面搭建，数据获取和展示 | 39 | start no earlier than 2019-06-27 | 崔文娟 | 16h |
| 41 | 1.1.2.3.3 | 叠加条件页面搭建 | 40 | start no earlier than 2019-06-27 | 崔文娟 | 4h |
| 42 | 1.1.2.4 | **个人中心** |  |  |  |  |
| 43 | 1.1.2.4.1 | 个人中心主页面搭建 | 138 |  | 崔文娟 | 3h |
| 44 | 1.1.2.4.2 | 客服 | 43 |  | 崔文娟 | 1h |
| 45 | 1.1.2.4.3 | 消息，主要逻辑跳转和权限显示 | 44 |  | 崔文娟 | 3h |
| 46 | 1.1.2.4.4 | 基本资料页面搭建和跳转 | 45 |  | 崔文娟 | 3h |
| 47 | 1.1.2.4.5 | 基本资料，修改头像，修改用户名，修改密码接口。 | 46 |  | 崔文娟 | 4h |
| 48 | 1.1.2.4.6 | 绑定手机号页面搭建，跳转，绑定接口开发和联调 | 47 |  | 崔文娟 | 6h |
| 49 | 1.1.2.4.7 | 汇款方式页面搭建，数据获取和页面展示 | 48 |  | 崔文娟 | 4h |
| 50 | 1.1.2.4.8 | 活动中心页面搭建，数据获取和页面展示 | 49 |  | 崔文娟 | 4h |
| 51 | 1.1.2.4.9 | 活动详情页搭建 | 50 |  | 崔文娟 | 3h |
| 52 | 1.1.2.4.10 | 服务商城页面搭建，数据获取和页面展示 | 51 |  | 崔文娟 | 4h |
| 53 | 1.1.2.4.11 | 服务商城详情页搭建 | 52 |  | 崔文娟 | 3h |
| 54 | 1.1.2.4.12 | 我的订单（全部，待付，已付，已取消）页面搭建，数据获取和展示 | 53 |  | 崔文娟 | 8h |
| 55 | 1.1.2.4.13 | 我的权限页面搭建 | 54 |  | 崔文娟 | 3h |
| 56 | 1.1.2.4.14 | 法律和免责内容调整 | 55 |  | 崔文娟 | 2h |
| 57 | 1.1.2.5 | **成长学堂** |  |  |  |  |
| 58 | 1.1.2.5.1 | 首页 | 29 |  | 李帅 | 8h |
| 59 | 1.1.2.5.2 | 股小白列表页 | 58 |  | 李帅 | 8h |
| 60 | 1.1.2.5.3 | 股大咖列表页 | 59 |  | 李帅 | 6h |
| 61 | 1.1.2.5.4 | 实战课程列表页 | 60 |  | 李帅 | 6h |
| 62 | 1.1.2.5.5 | 策略学堂列表页 | 61 |  | 李帅 | 8h |
| 63 | 1.1.2.5.6 | 视频播放页 | 62 |  | 李帅 | 16h |

| ID | WBS | Task | Predecessors | Constraint | Resources | Work |
| --- | --- | --- | --- | --- | --- | --- |
| 64 | 1.1.3 | **看势** |  |  |  |  |
| 65 | 1.1.3.1 | 自选股页、沪深页 |  |  | 杨紫剑 | 16h |
| 66 | 1.1.3.2 | 分时竖屏个股详情页 | 65 |  | 杨紫剑 | 16h |
| 67 | 1.1.3.3 | 分时横屏个股详情页 | 66 |  | 杨紫剑 | 16h |
| 68 | 1.1.3.4 | 收益统计页 | 67 |  | 杨紫剑 | 6h |
| 69 | 1.1.3.5 | **双突战法和资金流入数据的获取及绘制** |  |  |  |  |
| 70 | 1.1.3.5.1 | 安卓 | 68 | start no earlier than 2019-07-25 | 杨紫剑 | 24h |
| 71 | 1.1.3.5.2 | iOS | 63 | start no earlier than 2019-07-25 | 李帅 | 24h |
| 72 | 1.1.3.6 | 九转战法指标及组合 | 70 |  | 杨紫剑 | 24h |
| 73 | 1.1.3.7 | **多空资金 K线副图指标数据的获取及绘制** |  |  |  |  |
| 74 | 1.1.3.7.1 | 安卓 | 72 | start no earlier than 2019-07-25 | 杨紫剑 | 16h |
| 75 | 1.1.3.7.2 | iOS | 71 | start no earlier than 2019-07-25 | 李帅 | 16h |
| 76 | 1.1.3.8 | **主力资金 K线副图指标数据的获取及绘制** |  |  |  |  |
| 77 | 1.1.3.8.1 | 安卓 | 74 | start no earlier than 2019-07-25 | 杨紫剑 | 16h |
| 78 | 1.1.3.8.2 | iOS | 75 | start no earlier than 2019-07-25 | 李帅 | 16h |
| 79 | 1.1.3.9 | 指标设置页面（分权限） | 77 |  | 杨紫剑 | 8h |
| 80 | 1.1.4 | **观点** |  | start no earlier than 2019-06-28 |  |  |
| 81 | 1.1.4.1 | **专家分析** |  |  |  |  |
| 82 | 1.1.4.1.1 | 首页面 | 79 | start no earlier than 2019-06-28 | 杨紫剑 | 8h |
| 83 | 1.1.4.1.2 | 早知晓落地页及往期FM页 | 82 | start no earlier than 2019-06-28 | 杨紫剑 | 8h |
| 84 | 1.1.4.1.3 | 视频直播间 | 83 | start no earlier than 2019-06-28 | 杨紫剑 | 3h |
| 85 | 1.1.4.2 | 资讯 | 84 | start no earlier than 2019-06-28 | 杨紫剑 | 12h |
| 86 | 1.1.4.3 | 资讯详情(线上用的webview加载的内容) | 85 | start no earlier than 2019-06-27 | 杨紫剑 | 4h |
| 87 | 1.1.5 | **打榜** |  |  |  |  |
| 88 | 1.1.5.1 | 高管交易榜-最新交易 | 6 |  | 唐乾柱 | 12h |
| 89 | 1.1.5.2 | 高管交易榜-最新交易-搜索 | 88 |  | 唐乾柱 | 4h |
| 90 | 1.1.5.3 | 高管交易榜-集中买入 | 89 |  | 唐乾柱 | 8h |
| 91 | 1.1.5.4 | 高管持股变动 | 90 |  | 唐乾柱 | 4h |
| 92 | 1.1.5.5 | 高管交易榜-持续买入 | 91 |  | 唐乾柱 | 8h |
| 93 | 1.1.5.6 | 高管交易榜-市场统计 | 92 |  | 唐乾柱 | 12h |
| 94 | 1.1.5.7 | 高管交易榜-行业统计 | 93 |  | 唐乾柱 | 8h |
| 95 | 1.1.5.8 | 买卖明细 | 94 |  | 唐乾柱 | 4h |
| 96 | 1.1.5.9 | 涨停炸板-市场情绪 | 95 |  | 唐乾柱 | 16h |
| 97 | 1.1.5.10 | 涨停炸板-板块分析 | 96 |  | 唐乾柱 | 4h |
| 98 | 1.1.5.11 | 机构调研-最新调研 | 97 |  | 唐乾柱 | 8h |
| 99 | 1.1.5.12 | 机构调研-最新调研-搜索 | 98 |  | 唐乾柱 | 4h |
| 100 | 1.1.5.13 | 机构调研-一致看多 | 99 |  | 唐乾柱 | 8h |
| 101 | 1.1.5.14 | 机构调研-关注行业 | 100 |  | 唐乾柱 | 8h |
| 102 | 1.1.5.15 | 机构调研-关注个股 | 101 |  | 唐乾柱 | 8h |

| ID | WBS | Task | Predecessors | Constraint | Resources | Work |
| --- | --- | --- | --- | --- | --- | --- |
| 103 | 1.1.6 | **选股** |  |  |  |  |
| 104 | 1.1.6.1 | 选股页面搭建 | 102 |  | 唐乾柱 | 4h |
| 105 | 1.1.6.2 | 特色指标选股页面搭建 | 104 |  | 唐乾柱 | 4h |
| 106 | 1.1.6.3 | 组合选股页面搭建，数据获取和展示 | 105 |  | 唐乾柱 | 8h |
| 107 | 1.1.6.4 | 指标选股页面搭建，数据获取和展示 | 106 |  | 唐乾柱 | 8h |
| 108 | 1.1.6.5 | **特色指标详情页** |  |  |  |  |
| 109 | 1.1.6.5.1 | 指标介绍内容获取和展示 | 107 |  | 唐乾柱 | 2h |
| 110 | 1.1.6.5.2 | 成长学堂数据获取，展示和跳转 | 109 |  | 唐乾柱 | 2h |
| 111 | 1.1.6.5.3 | 叠加条件，重置后展示调整 | 110 |  | 唐乾柱 | 4h |
| 112 | 1.1.6.5.4 | 入选股票列表数据获取，列表展示和跳转 | 111 |  | 唐乾柱 | 8h |
| 113 | 1.1.6.5.5 | 叠加条件页面搭建和跳转 | 112 |  | 唐乾柱 | 4h |
| 114 | 1.1.6.6 | 价值策略页面搭建，数据获取和展示 | 113 |  | 唐乾柱 | 16h |
| 115 | 1.1.6.7 | **价值策略详情页** |  |  |  |  |
| 116 | 1.1.6.7.1 | 策略介绍内容获取和展示 | 114 |  | 唐乾柱 | 2h |
| 117 | 1.1.6.7.2 | 成长学堂数据获取，展示和跳转 | 116 |  | 唐乾柱 | 2h |
| 118 | 1.1.6.7.3 | 历史战绩数据获取，展示和跳转 | 117 |  | 唐乾柱 | 4h |
| 119 | 1.1.6.7.4 | 历史战绩页面搭建 | 118 | start no earlier than 2019-06-27 | 唐乾柱 | 6h |
| 120 | 1.1.6.7.5 | 叠加条件，重置后展示调整 | 119 | start no earlier than 2019-06-27 | 唐乾柱 | 4h |
| 121 | 1.1.6.7.6 | 叠加条件页面搭建 | 120 | start no earlier than 2019-06-27 | 唐乾柱 | 4h |
| 122 | 1.1.6.7.7 | 入选股票列表 | 121 | start no earlier than 2019-06-27 | 唐乾柱 | 8h |
| 123 | 1.1.6.8 | 研报策略页面搭建，数据获取和展示 | 122 |  | 唐乾柱 | 16h |
| 124 | 1.1.7 | **其他** |  |  |  |  |
| 125 | 1.1.7.1 | **登录注册** |  |  |  |  |
| 126 | 1.1.7.1.1 | 登录页面调整 |  |  | 崔文娟 | 2h |
| 127 | 1.1.7.1.2 | 注册页面搭建，跳转 | 126 |  | 崔文娟 | 3h |
| 128 | 1.1.7.1.3 | 找回密码页面搭建，跳转 | 127 |  | 崔文娟 | 3h |
| 129 | 1.1.7.1.4 | 注册协议页面 | 128 |  | 崔文娟 | 2h |
| 130 | 1.1.7.1.5 | 登录注册相关接口开发和联调(登录，注册，获取验证码，验证手机是否注册，修改密码) | 129 |  | 崔文娟 | 16h |
| 131 | 1.1.7.1.6 | 相关接口调试 | 130 | start no earlier than 2019-06-27 | 崔文娟 | 16h |
| 132 | 1.1.7.1.7 | 登录成功用户个人信息，权限，和用户相关信息存储和获取 | 131 | start no earlier than 2019-06-27 | 崔文娟 | 8h |
| 133 | 1.1.7.1.8 | 数据获取接口调试 | 132 | start no earlier than 2019-06-27 | 崔文娟 | 8h |

| ID | WBS | Task | Predecessors | Constraint | Resources | Work |
| --- | --- | --- | --- | --- | --- | --- |
| 134 | 1.1.7.2 | **营销页** |  |  |  |  |
| 135 | 1.1.7.2.1 | 用户进入app营销显示逻辑 | 133 |  | 崔文娟 | 8h |
| 136 | 1.1.7.2.2 | 营销内容获取和存储和显示 | 135 |  | 崔文娟 | 4h |
| 137 | 1.1.7.2.3 | 营销详情页逻辑搭建和逻辑调整（三 四 五星） | 136 |  | 崔文娟 | 8h |
| 138 | 1.1.7.2.4 | 营销详情页开通权限接口开发和调试 | 137 |  | 崔文娟 | 4h |
| 139 | 1.1.7.3 | **推送** |  |  |  |  |
| 140 | 1.1.7.3.1 | 安卓端 | 123 | start no earlier than 2019-06-28 | 唐乾柱 | 8h |
| 141 | 1.1.7.3.2 | iOS端 | 78 | start no earlier than 2019-06-28 | 李帅 | 8h |
| 142 | 1.1.7.4 | **分享** |  | start no earlier than 2019-07-02 |  |  |
| 143 | 1.1.7.4.1 | ios(应用申请) | 41 | start no earlier than 2019-07-02 | 崔文娟 | 8h |
| 144 | 1.1.7.4.2 | Android | 140 | start no earlier than 2019-07-02 | 唐乾柱 | 8h |
| 145 | 1.1.7.5 | 强制更新 | 143 | start no earlier than 2019-07-02 | 崔文娟 | 4h |
| 146 | 1.1.7.6 | 手势改造 | 86 | start no earlier than 2019-06-28 | 杨紫剑 | 40h |
